# King's Cross Platform 8 Upgrade

Schedule from Primavera P6, 2026-01-01 to 2026-10-09, data date 2026-05-01, costs in GBP, A marks actual dates.

## Calendars

- Corporate - Standard Full Time: Mon-Fri 08:00-16:00; Sat-Sun off.

## Schedule

| ID | WBS | Activity | Type | Duration | Start | Finish | Predecessors | Complete | Remaining | Planned start | Planned finish | Total float | Free float |
| --- | --- | --- | --- | --- | --- | --- | --- | --- | --- | --- | --- | --- | --- |
|  | 1 | **Project Management** |  |  | 2026-01-01 | 2026-10-09 |  |  |  |  |  |  |  |
|  | 1 | **Contract Admin & Reporting** |  |  | 2026-01-01 | 2026-01-01 |  |  |  |  |  |  |  |
| A1000 |  | Monthly Progress Report & Meeting | level of effort | 0d | 2026-01-01 A | 2026-01-01 A |  | 100% |  |  |  |  |  |
|  | 2 | **Commercial & Change Management** |  |  | 2026-09-28 | 2026-10-09 |  |  |  |  |  |  |  |
| A1010 |  | Process Final Account |  | 10d | 2026-09-28 | 2026-10-09 | A6020 |  |  |  |  | 0d |  |
|  | 2 | **Design & Engineering** |  |  | 2026-01-01 | 2026-02-05 |  |  |  |  |  |  |  |
|  | 1 | **Detailed Design (Foundations)** |  |  | 2026-01-01 | 2026-01-29 |  |  |  |  |  |  |  |
| A2000 |  | Mobilise Design Team |  | 1d | 2026-01-01 A | 2026-01-01 A |  | 100% |  |  |  |  |  |
| A2010 |  | Issue "For Construction" Foundation Designs |  | 20d | 2026-01-02 A | 2026-01-29 A | A2000 | 100% |  |  |  |  |  |
|  | 2 | **Detailed Design (M&E)** |  |  | 2026-01-02 | 2026-02-05 |  |  |  |  |  |  |  |
| A2020 |  | Issue "For Construction" M&E/Comms Designs |  | 25d | 2026-01-02 A | 2026-02-05 A | A2000 | 100% |  |  |  |  |  |
|  | 3 | **Procurement** |  |  | 2026-01-16 | 2026-07-23 |  |  |  |  |  |  |  |
|  | 1 | **Piling Subcontractor** |  |  | 2026-01-16 | 2026-02-26 |  |  |  |  |  |  |  |
| A3000 |  | Tender and Appoint Piling Subcontractor |  | 30d | 2026-01-16 A | 2026-02-26 A | A2010 SS+10d | 100% |  |  |  |  |  |
|  | 2 | **DfMA Platform Sections (Long Lead)** |  |  | 2026-01-30 | 2026-05-05 |  |  |  |  |  |  |  |
| A3010 |  | Place Order for DfMA Platform Sections |  | 5d | 2026-01-30 A | 2026-02-05 A | A2010 | 100% |  |  |  |  |  |
| A3020 |  | Manufacture & Deliver DfMA Sections (80 units) |  | 5d | 2026-02-06 A | 2026-05-05 | A3010 | 50% | 2.5d | 2026-02-06 | 2026-02-12 | 7.5d | 11.5d |
|  | 3 | **M&E / Comms Equipment** |  |  | 2026-05-01 | 2026-07-23 |  |  |  |  |  |  |  |
| A3030 |  | Procure Long-Lead M&E (CCTV, PIS, OPO) |  | 60d | 2026-05-01 | 2026-07-23 | A2020 |  |  |  |  | -40d | 0d |
|  | 4 | **Site Establishment** |  |  | 2026-01-01 | 2026-01-21 |  |  |  |  |  |  |  |
|  | 1 | **Welfare & Site Offices** |  |  | 2026-01-01 | 2026-01-14 |  |  |  |  |  |  |  |
| A4000 |  | Set Up Site Welfare & Offices |  | 10d | 2026-01-01 A | 2026-01-14 A |  | 100% |  |  |  |  |  |
|  | 2 | **Site Logistics & Hoarding** |  |  | 2026-01-15 | 2026-01-21 |  |  |  |  |  |  |  |
| A4010 |  | Install Site Hoarding & Access Gates |  | 5d | 2026-01-15 A | 2026-01-21 A | A4000 | 100% |  |  |  |  |  |

| ID | WBS | Activity | Duration | Start | Finish | Predecessors | Complete | Remaining | Planned start | Planned finish | Total float | Free float | Cost |
| --- | --- | --- | --- | --- | --- | --- | --- | --- | --- | --- | --- | --- | --- |
|  | 5 | **Construction Works** |  | 2026-01-22 | 2026-09-03 |  |  |  |  |  |  |  |  |
|  | 1 | **Enabling Works & Demolition** |  | 2026-01-22 | 2026-02-25 |  |  |  |  |  |  |  |  |
| A5000 |  | Mark Out & Scan for Services (Pre-Possession) | 5d | 2026-01-22 A | 2026-01-28 A | A4010 | 100% |  |  |  |  |  |  |
| A5010 |  | (POSSESSION) - Demolish Existing Platform (250m) | 20d | 2026-01-29 A | 2026-02-25 A | A5000 | 100% |  |  |  |  |  | 150,000 |
|  | 2 | **Substructure (Foundations)** |  | 2026-02-27 | 2026-07-01 |  |  |  |  |  |  |  |  |
| A5020 |  | (POSSESSION) - Install Micro-pile Foundations (Zone 1) | 15d | 2026-02-27 A | 2026-05-20 | A5010, A3000 | 7% | 14d | 2026-02-27 | 2026-03-19 | -34d | 0d | 125,000 |
| A5030 |  | (POSSESSION) - Install Micro-pile Foundations (Zone 2) | 15d | 2026-05-21 | 2026-06-10 | A5020 |  |  |  |  | -34d | 0d | 125,000 |
| A5040 |  | (POSSESSION) - Install Micro-pile Foundations (Zone 3) | 15d | 2026-06-11 | 2026-07-01 | A5030 |  |  |  |  | -34d | 0d | 125,000 |
|  | 3 | **Superstructure (DfMA Installation)** |  | 2026-05-21 | 2026-07-15 |  |  |  |  |  |  |  |  |
| A5050 |  | (POSSESSION) - Install DfMA Sections (Zone 1) | 10d | 2026-05-21 | 2026-06-03 | A5020, A3020 |  |  |  |  | -4d | 15d | 250,000 |
| A5060 |  | (POSSESSION) - Install DfMA Sections (Zone 2) | 10d | 2026-06-11 | 2026-06-24 | A5030, A5050 SS |  |  |  |  | -19d | 15d | 250,000 |
| A5070 |  | (POSSESSION) - Install DfMA Sections (Zone 3) | 10d | 2026-07-02 | 2026-07-15 | A5040, A5060 SS |  |  |  |  | -34d | 0d | 250,000 |
|  | 4 | **Platform Finishes** |  | 2026-06-25 | 2026-08-20 |  |  |  |  |  |  |  |  |
| A5080 |  | Install Drainage & Form Troughs (Zone 1-3) | 15d | 2026-06-25 | 2026-07-15 | A5070 FF |  |  |  |  | -34d | 0d | 80,000 |
| A5090 |  | Install Platform Surfacing & Tactile Paving | 20d | 2026-07-24 | 2026-08-20 | A5110 FF |  |  |  |  | -40d | 0d | 110,000 |
|  | 5 | **M&E and Comms Installation** |  | 2026-06-25 | 2026-09-03 |  |  |  |  |  |  |  |  |
| A5100 |  | M&E First Fix (Cabling, Containment) | 15d | 2026-06-25 | 2026-07-15 | A5080 SS |  |  |  |  | -34d | 6d | 75,000 |
| A5110 |  | M&E Second Fix (Install CCTV, PIS, PA, OPO) | 20d | 2026-07-24 | 2026-08-20 | A3030, A5100 |  |  |  |  | -40d | 0d | 90,000 |
| A5120 |  | M&E Power & Comms Connections | 10d | 2026-08-21 | 2026-09-03 | A5090 |  |  |  |  | -40d | 0d | 45,000 |
|  | 6 | **Testing & Commissioning** |  | 2026-09-04 | 2026-09-25 |  |  |  |  |  |  |  |  |
|  | 1 | **M&E Systems Testing** |  | 2026-09-04 | 2026-09-17 |  |  |  |  |  |  |  |  |
| A6000 |  | Test and Commission all M&E/Comms Systems | 10d | 2026-09-04 | 2026-09-17 | A5120 |  |  |  |  | -40d | 0d | 50,000 |
|  | 2 | **Handover & As-Builts** |  | 2026-09-18 | 2026-09-25 |  |  |  |  |  |  |  |  |
| A6010 |  | Client Walk-down & Snagging | 5d | 2026-09-18 | 2026-09-24 | A6000 |  |  |  |  | -40d | 0d |  |
| A6020 |  | Project Handover | 1d | 2026-09-25 | 2026-09-25 | A6010 |  |  |  |  | -40d | 0d |  |

Notes:
- A5010: Expenses: Contract Value 150000
- A5020: Expenses: Contract Value 125000
- A5030: Expenses: contract value 125000
- A5040: Expenses: contrcat value 125000
- A5050: Expenses: cntract value 250000
- A5060: Expenses: contract value 250000
- A5070: Expenses: contract value 250000
- A5080: Expenses: cv 80000
- A5090: Expenses: cv 110000
- A5100: Expenses: cv 75000
- A5110: Expenses: cv 90000
- A5120: Expenses: cv 45000
- A6000: Expenses: cv 50000

| ID | WBS | Activity | Type | Duration | Start | Finish | Predecessors | Total float | Free float | Constraint |
| --- | --- | --- | --- | --- | --- | --- | --- | --- | --- | --- |
|  | 7 | **Milestones** |  |  | 2026-05-01 | 2026-09-25 |  |  |  |  |
|  | 1 | **Client Milestones (NEC)** |  |  | 2026-05-01 | 2026-09-25 |  |  |  |  |
| M1000 |  | MILESTONE: Contract Start | milestone | 0d | 2026-05-01 | 2026-05-01 |  | -86d | 116d | start on 2026-01-01 |
| M1010 |  | MILESTONE: Platform Closed to Public | milestone | 0d | 2026-05-01 | 2026-05-01 | A5000 | -64d | 116d | start on 2026-02-01 |
| M1020 |  | MILESTONE: Platform Demolition Complete | milestone | 0d | 2026-05-01 | 2026-05-01 | A5010 | -44d | 116d | finish on or before 2026-03-01 |
| M1030 |  | MILESTONE: Platform Structure Complete | milestone | 0d | 2026-07-15 | 2026-07-15 | A5070 | -33d | 62d | finish on or before 2026-06-01 |
| M1040 |  | MILESTONE: Ready for Passenger Service | milestone | 0d | 2026-09-25 | 2026-09-25 | A6020 FF | -40d | 10d | finish on or before 2026-08-01 |
